# 【AFR_ENHANCE】Schedule_Training Vue.JS

Schedule from MS Project, 2020-06-02 to 2020-06-25.

## Calendars

- Standard: Mon-Fri 08:30-12:00, 13:00-17:00; Sat-Sun off.

## Resources

| Resource |
| --- |
| Chien |
| SonNV |
| Thao |
| NguyenNV |
| HauTK |
| Member |
| All |
| PM |
| Member1 |
| BSE |

## Schedule

| ID | WBS | Task | Type | Duration | Start | Finish | Predecessors | Baseline start | Baseline finish | Baseline duration | Total slack | Constraint | Resources | Work |
| --- | --- | --- | --- | --- | --- | --- | --- | --- | --- | --- | --- | --- | --- | --- |
| 1 | 1 | **Vue JS Bootstrap** |  | 16.19d | 2020-06-02 08:30 | 2020-06-25 10:30 |  | 2020-01-20 08:30 | 2020-01-30 15:30 | 4.5d | 0d |  |  | 129.5h |
| 2 | 1.1 | Start | milestone | 0d | 2020-06-02 08:30 | 2020-06-02 08:30 |  |  |  |  | 0d | start no earlier than 2020-06-02 08:30 |  |  |
| 3 | 1.2 | **Training** |  | 9.44d | 2020-06-02 08:30 | 2020-06-16 09:00 |  |  |  |  | 0d |  |  | 75.5h |
| 4 | 1.2.1 | **Khái niệm cơ bản** |  | 2.62d | 2020-06-02 08:30 | 2020-06-04 15:30 |  | 2020-01-20 08:30 | 2020-01-30 15:30 | 4.5d | 0d |  |  | 21h |
| 5 | 1.2.1.1 | Overview |  | 1h | 2020-06-02 08:30 | 2020-06-02 09:30 | 2 |  |  |  | 0d |  | Member | 1h |
| 6 | 1.2.1.2 | Enviroment Setup |  | 2h | 2020-06-02 09:30 | 2020-06-02 11:30 | 5 |  |  |  | 0d |  | Member | 2h |
| 7 | 1.2.1.3 | Instance |  | 1h | 2020-06-02 11:30 | 2020-06-02 13:30 | 6 |  |  |  | 0d |  | Member | 1h |
| 8 | 1.2.1.4 | Template Syntax |  | 2h | 2020-06-02 13:30 | 2020-06-02 15:30 | 7 |  |  |  | 0d |  | Member | 2h |
| 9 | 1.2.1.5 | Computed Properties and Watchers |  | 2h | 2020-06-02 15:30 | 2020-06-03 09:00 | 8 |  |  |  | 0d |  | Member | 2h |
| 10 | 1.2.1.6 | Class and Style Bindings |  | 3h | 2020-06-03 09:00 | 2020-06-03 12:00 | 9 |  |  |  | 0d |  | Member | 3h |
| 11 | 1.2.1.7 | Conditional Rendering |  | 2h | 2020-06-03 13:00 | 2020-06-03 15:00 | 10 |  |  |  | 0d |  | Member | 2h |
| 12 | 1.2.1.8 | List Rendering |  | 2h | 2020-06-03 15:00 | 2020-06-03 17:00 | 11 |  |  |  | 0d |  | Member | 2h |
| 13 | 1.2.1.9 | Event Handling |  | 2h | 2020-06-04 08:30 | 2020-06-04 10:30 | 12 |  |  |  | 0d |  | Member | 2h |
| 14 | 1.2.1.10 | Form Input Bindings |  | 3h | 2020-06-04 10:30 | 2020-06-04 14:30 | 13 |  |  |  | 0d |  | Member | 3h |
| 15 | 1.2.1.11 | Components Basics |  | 1h | 2020-06-04 14:30 | 2020-06-04 15:30 | 14 |  |  |  | 0d |  | Member | 1h |
| 16 | 1.2.2 | **Làm việc với Component** |  | 0.94d | 2020-06-04 15:30 | 2020-06-05 15:30 |  |  |  |  | 0d |  |  | 7.5h |
| 17 | 1.2.2.1 | Component Registration |  | 2h | 2020-06-04 15:30 | 2020-06-05 09:00 | 15 |  |  |  | 0d |  | Member | 2h |
| 18 | 1.2.2.2 | Props |  | 2h | 2020-06-05 09:00 | 2020-06-05 11:00 | 17 |  |  |  | 0d |  | Member | 2h |
| 19 | 1.2.2.3 | Custom Events |  | 1h | 2020-06-05 11:00 | 2020-06-05 12:00 | 18 |  |  |  | 0d |  | Member | 1h |
| 20 | 1.2.2.4 | Slots |  | 0.5h | 2020-06-05 13:00 | 2020-06-05 13:30 | 19 |  |  |  | 0d |  | Member | 0.5h |
| 21 | 1.2.2.5 | Dynamic & Async Components |  | 1h | 2020-06-05 13:30 | 2020-06-05 14:30 | 20 |  |  |  | 0d |  | Member | 1h |
| 22 | 1.2.2.6 | Handling Edge Cases |  | 1h | 2020-06-05 14:30 | 2020-06-05 15:30 | 21 |  |  |  | 0d |  | Member | 1h |
| 23 | 1.2.3 | **Scaling Up** |  | 1.75d | 2020-06-05 15:30 | 2020-06-09 14:30 |  |  |  |  | 0d |  |  | 14h |
| 24 | 1.2.3.1 | Routing |  | 4h | 2020-06-05 15:30 | 2020-06-08 11:00 | 22 |  |  |  | 0d |  | Member | 4h |
| 25 | 1.2.3.2 | State Management |  | 1h | 2020-06-08 11:00 | 2020-06-08 12:00 | 24 |  |  |  | 0d |  | Member | 1h |
| 26 | 1.2.3.3 | Server-Side Rendering |  | 1d | 2020-06-08 13:00 | 2020-06-09 13:30 | 25 |  |  |  | 0d |  | Member | 8h |
| 27 | 1.2.3.4 | Security |  | 1h | 2020-06-09 13:30 | 2020-06-09 14:30 | 26 |  |  |  | 0d |  | Member | 1h |
| 28 | 1.2.4 | Lib: Vuex |  | 1d | 2020-06-09 14:30 | 2020-06-10 15:00 | 27 |  |  |  | 0d |  | Member | 8h |
| 29 | 1.2.5 | Lib: Bootstrap 4 |  | 2d | 2020-06-10 15:00 | 2020-06-12 16:00 | 28 |  |  |  | 0d |  | Member | 16h |
| 30 | 1.2.6 | Họp tổng hợp lại các kiến thức sau training, các vấn đề tồn đọng |  | 2h | 2020-06-12 16:00 | 2020-06-15 09:30 | 29 |  |  |  | 0d |  | All | 2h |
| 31 | 1.2.7 | Tạo Rule |  | 3h | 2020-06-15 09:30 | 2020-06-15 13:30 | 30 |  |  |  | 0d |  | Member | 3h |
| 32 | 1.2.8 | Tổng hợp các rule lại để thống nhất sử dụng |  | 2h | 2020-06-15 13:30 | 2020-06-15 15:30 | 31 |  |  |  | 0d |  | PM | 2h |
| 33 | 1.2.9 | Phổ biến quy trình code cho member, giải thích REQ |  | 2h | 2020-06-15 15:30 | 2020-06-16 09:00 | 32 |  |  |  | 0d |  | PM | 2h |

Notes:
- 5: https://vi.vuejs.org/v2/guide/index.html
- 6: https://vi.vuejs.org/v2/guide/installation.html
- 7: https://vi.vuejs.org/v2/guide/instance.html
- 8: https://vi.vuejs.org/v2/guide/syntax.html
- 9: https://vi.vuejs.org/v2/guide/computed.html
- 10: https://vi.vuejs.org/v2/guide/class-and-style.html
- 11: https://vi.vuejs.org/v2/guide/conditional.html
- 12: https://vi.vuejs.org/v2/guide/list.html
- 13: https://vi.vuejs.org/v2/guide/events.html
- 14: https://vi.vuejs.org/v2/guide/forms.html
- 15: https://vi.vuejs.org/v2/guide/components.html
- 17: https://vi.vuejs.org/v2/guide/components-registration.html
- 18: https://vi.vuejs.org/v2/guide/components-props.html
- 19: https://vi.vuejs.org/v2/guide/components-custom-events.html
- 20: https://vi.vuejs.org/v2/guide/components-slots.html
- 21: https://vi.vuejs.org/v2/guide/components-dynamic-async.html
- 22: https://vi.vuejs.org/v2/guide/components-edge-cases.html
- 24: https://vi.vuejs.org/v2/guide/routing.html
- 25: https://vi.vuejs.org/v2/guide/state-management.html
- 26: https://vi.vuejs.org/v2/guide/ssr.html
- 27: https://vuejs.org/v2/guide/security.html
- 28: https://vuex.vuejs.org
- 29: https://getbootstrap.com/docs/4.0/getting-started/introduction

| ID | WBS | Task | Duration | Start | Finish | Predecessors | Total slack | Resources | Work |
| --- | --- | --- | --- | --- | --- | --- | --- | --- | --- |
| 34 | 1.3 | **Code MH** | 6.75d | 2020-06-16 09:00 | 2020-06-25 10:30 |  | 0d |  | 54h |
| 35 | 1.3.1 | **Màn hình 1 メニュー画面** | 1.38d | 2020-06-16 09:00 | 2020-06-17 13:30 |  | 0d |  | 11h |
| 36 | 1.3.1.1 | Code | 6h | 2020-06-16 09:00 | 2020-06-16 16:00 | 33 | 0d | Member | 6h |
| 37 | 1.3.1.2 | Review | 2h | 2020-06-16 16:00 | 2020-06-17 09:30 | 36 | 0d | Member1 | 2h |
| 38 | 1.3.1.3 | Confirm | 2h | 2020-06-17 09:30 | 2020-06-17 11:30 | 37 | 0d | Member | 2h |
| 39 | 1.3.1.4 | Test thử sản phẩm và Gửi cho crescoVN confirm xem đã ok chưa | 1h | 2020-06-17 11:30 | 2020-06-17 13:30 | 38 | 0d | BSE | 1h |
| 40 | 1.3.2 | **Màn hình 2 一覧画面** | 1.62d | 2020-06-17 13:30 | 2020-06-19 10:30 |  | 0d |  | 13h |
| 41 | 1.3.2.1 | Code | 8h | 2020-06-17 13:30 | 2020-06-18 14:00 | 39 | 0d | Member | 8h |
| 42 | 1.3.2.2 | Review | 2h | 2020-06-18 14:00 | 2020-06-18 16:00 | 41 | 0d | Member1 | 2h |
| 43 | 1.3.2.3 | Confirm | 2h | 2020-06-18 16:00 | 2020-06-19 09:30 | 42 | 0d | Member | 2h |
| 44 | 1.3.2.4 | Test thử sản phẩm và Gửi cho crescoVN confirm xem đã ok chưa | 1h | 2020-06-19 09:30 | 2020-06-19 10:30 | 43 | 0d | BSE | 1h |
| 45 | 1.3.3 | **Màn hình 3 単票画面** | 1.5d | 2020-06-19 10:30 | 2020-06-22 16:00 |  | 0d |  | 12h |
| 46 | 1.3.3.1 | Code | 1d | 2020-06-19 10:30 | 2020-06-22 11:00 | 44 | 0d | Member | 8h |
| 47 | 1.3.3.2 | Review | 0.25d | 2020-06-22 11:00 | 2020-06-22 14:00 | 46 | 0d | Member1 | 2h |
| 48 | 1.3.3.3 | Confirm | 0.25d | 2020-06-22 14:00 | 2020-06-22 16:00 | 47 | 0d | Member | 2h |
| 49 | 1.3.4 | Thực hiện test tích hợp các màn hình | 4h | 2020-06-22 16:00 | 2020-06-23 11:30 | 48 | 0d | Member1 | 4h |
| 50 | 1.3.5 | fix bug | 4h | 2020-06-23 11:30 | 2020-06-23 16:30 | 49 | 0d | Member | 4h |
| 51 | 1.3.6 | confirm bug | 4h | 2020-06-23 16:30 | 2020-06-24 12:00 | 50 | 0d | Member1 | 4h |
| 52 | 1.3.7 | Chuẩn bị nộp hàng | 4h | 2020-06-24 13:00 | 2020-06-24 17:00 | 51 | 0d | BSE | 4h |
| 53 | 1.3.8 | Nộp hàng nhờ kh review và xin feedback | 2h | 2020-06-25 08:30 | 2020-06-25 10:30 | 52 | 0d | BSE | 2h |
